# LoRa_V1

How a schedule from ProjectLibre changed from version to version. A marks actual dates.

## Version 1 (saved 2021-11-24)

Note of the change: Asignación de Recursos y Nuevos datos para economiua

| ID | WBS | Task | Duration | Start | Finish | Predecessors |
| --- | --- | --- | --- | --- | --- | --- |
| 1 |  | INICIO | 0d | 2020-03-09 | 2020-03-09 |  |
| 2 | 2 | **INVESTIGACION** | 50d | 2020-03-09 | 2020-05-22 |  |
| 3 |  | Productos Similares | 5d | 2020-03-09 | 2020-03-13 |  |
| 4 |  | Protocolos de Comunicación | 10d | 2020-03-16 | 2020-04-01 | 3 |
| 5 |  | Protocolos de IoT | 25d | 2020-03-09 | 2020-04-17 | 4FS-15d |
| 6 |  | Factibilidad Técnica | 30d | 2020-04-13 | 2020-05-22 | 4SS, 8FF |
| 7 |  | Recopilación de información de proceso y lugar. | 5d | 2020-04-20 | 2020-04-24 | 5 |
| 8 |  | Cálculos de enlace. | 20d | 2020-04-27 | 2020-05-22 | 7 |
| 9 |  | Regulaciones. | 20d | 2020-04-20 | 2020-05-15 | 5 |
| 10 | 3 | **PLANIFICACION** | 35d | 2020-05-25 | 2020-07-10 |  |
| 11 |  | Estudio de Mercado. | 10d | 2020-05-25 | 2020-06-05 | 6 |
| 12 |  | Establecimiento de requerimientos. | 20d | 2020-06-08 | 2020-07-03 | 11 |
| 13 |  | Grupo de trabajo y tareas. | 5d | 2020-07-06 | 2020-07-10 | 12 |
| 14 | 4 | **INGENIERIA** | 155d | 2020-07-13 | 2021-02-12 |  |
| 15 |  | Diseño de Software. | 50d | 2020-07-13 | 2020-09-18 | 13 |
| 16 |  | Diseño de Hardware. | 40d | 2020-09-07 | 2020-10-30 | 15FS-10d |
| 17 |  | Esquemático. | 10d | 2020-11-02 | 2020-11-13 | 16 |
| 18 |  | Especificaciones técnicas. | 10d | 2020-11-16 | 2020-11-27 | 17 |
| 19 |  | Listado de Materiales. | 15d | 2020-11-30 | 2020-12-18 | 18 |
| 20 |  | Desarrollo de protocolo de pruebas. | 5d | 2020-11-30 | 2020-12-04 | 18 |
| 21 |  | Pruebas básicas en protoboard. | 15d | 2020-12-07 | 2020-12-25 | 20 |
| 22 |  | Diseño de PCB. | 10d | 2020-12-28 | 2021-01-08 | 21 |
| 23 |  | Diseño de Montaje. | 10d | 2021-01-11 | 2021-01-22 | 18, 22 |
| 24 |  | Plano Topográfico Rev A. | 15d | 2021-01-25 | 2021-02-12 | 23 |
| 25 | 5 | **COMPRAS** | 144d | 2020-10-05 | 2021-04-28 |  |
| 26 |  | Circuito Impreso Prototipo. | 15d | 2021-01-11 | 2021-01-29 | 22 |
| 27 |  | Circuito Impreso Diseño Final. | 20d | 2021-03-31 | 2021-04-28 | 55 |
| 28 |  | Componentes Nacionales. | 15d | 2020-12-21 | 2021-01-08 | 19 |
| 29 |  | Componentes Importados. | 45d | 2020-10-05 | 2020-12-04 | 16FS-20d |
| 30 |  | Gabinete. | 14d | 2021-01-25 | 2021-02-11 | 23 |
| 31 |  | Panel Solar. | 25d | 2021-01-25 | 2021-03-02 | 23 |
| 32 |  | Batería. | 45d | 2021-01-11 | 2021-03-16 | 23FS-10d |
| 33 |  | Antena. | 70d | 2020-11-02 | 2021-02-05 | 18FS-20d |
| 34 |  | Cables para antena. | 30d | 2020-11-23 | 2021-01-01 | 19FS-20d |
| 35 | 6 | **PROGRAMACION** | 113d | 2020-09-21 | 2021-02-26 |  |
| 36 |  | Adquisición de entradas. | 15d | 2020-09-21 | 2020-10-09 | 15 |
| 37 |  | Comunicación. | 10d | 2020-10-12 | 2020-10-23 | 36 |
| 38 |  | Configuración de GW. (Si se vende el GW tanto mejor) | 5d | 2020-10-26 | 2020-10-30 | 37 |
| 39 |  | Tratamiendo de los datos con NodeRed. | 28d | 2020-11-02 | 2020-12-09 | 38 |
| 40 |  | Historización en base de datos InfluxdB. | 20d | 2020-12-10 | 2021-01-06 | 39 |
| 41 |  | Visualización en Grafana. | 20d | 2021-01-07 | 2021-02-03 | 40 |
| 42 |  | Configuración de servidores locales. | 15d | 2021-02-04 | 2021-02-26 | 41 |
| 43 | 7 | **CONSTRUCCION** | 64d | 2021-02-01 | 2021-05-05 |  |
| 44 |  | Soldado de placa prototipo. | 5d | 2021-02-01 | 2021-02-05 | 26 |
| 45 |  | Soldado de placa diseño definitivo. | 5d | 2021-04-29 | 2021-05-05 | 27 |
| 46 |  | Construcción de Gabinete con Panel y Antena. | 5d | 2021-02-08 | 2021-02-12 | 44 |
| 47 | 8 | **ENSAYOS** | 5d | 2021-02-17 | 2021-02-23 |  |
| 48 |  | Eléctricos/Electrónicos. | 1d | 2021-02-17 | 2021-02-17 | 46 |
| 49 |  | Mecánicos. | 1d | 2021-02-18 | 2021-02-18 | 48 |
| 50 |  | Comunicación. | 3d | 2021-02-19 | 2021-02-23 | 33, 34, 49 |
| 51 |  | Software. | 3d | 2021-02-19 | 2021-02-23 | 49 |
| 52 | 9 | **PRUEBAS DE FUNCIONAMIENTO DE PROTOTIPO.** | 57d | 2021-02-19 | 2021-05-12 |  |
| 53 |  | Configuración de programa. | 2d | 2021-02-19 | 2021-02-22 | 49 |
| 54 |  | Mediciones. | 15d | 2021-02-23 | 2021-03-15 | 53 |
| 55 |  | Validación de prototipo. | 10d | 2021-03-16 | 2021-03-30 | 54 |
| 56 |  | Historicos de datos. | 10d | 2021-03-31 | 2021-04-14 | 55 |
| 57 |  | Visualización. | 20d | 2021-04-15 | 2021-05-12 | 56 |
| 58 | 10 | **TESTING FINAL** | 20d | 2021-05-06 | 2021-06-04 |  |
| 59 |  | Repetición de pruebas en definitivo | 10d | 2021-05-06 | 2021-05-19 | 45 |
| 60 |  | Validación del sistema final | 10d | 2021-05-20 | 2021-06-04 | 59 |
| 61 | 11 | **DOCUMENTACION** | 55d | 2021-06-07 | 2021-08-25 |  |
| 62 |  | Manual de Usuario | 20d | 2021-06-07 | 2021-07-05 | 60 |
| 63 |  | Guía rápida. | 20d | 2021-07-06 | 2021-08-03 | 62 |
| 64 |  | Plano Topográfico y de Conexionado Definitivos | 15d | 2021-08-04 | 2021-08-25 | 63 |
| 65 |  | FIN | 0d | 2021-08-25 | 2021-08-25 | 64 |

## Version 2 (saved 2021-11-24)

Note of the change: Nueva Asignación de recursos antes de reunión con tutor

Last finish 2021-08-25 → 2021-10-01 (+37d).

Changed:

| ID | Task | Start | Finish | Duration | Other |
| --- | --- | --- | --- | --- | --- |
| 2 | **INVESTIGACION** |  | 2020-05-22 → 2020-06-05 (+14d) | 50d → 60d |  |
| 3 | Productos Similares |  | 2020-03-13 → 2020-03-20 (+7d) | 5d → 10d |  |
| 4 | Protocolos de Comunicación | 2020-03-16 → 2020-03-25 (+9d) | 2020-04-01 → 2020-04-17 (+16d) | 10d → 15d |  |
| 5 | Protocolos de IoT | 2020-03-09 → 2020-03-25 (+16d) | 2020-04-17 → 2020-05-01 (+14d) |  |  |
| 6 | Factibilidad Técnica | 2020-04-13 → 2020-04-27 (+14d) | 2020-05-22 → 2020-06-05 (+14d) |  |  |
| 7 | Recopilación de información de proceso y lugar. | 2020-04-20 → 2020-05-04 (+14d) | 2020-04-24 → 2020-05-08 (+14d) |  |  |
| 8 | Cálculos de enlace. | 2020-04-27 → 2020-05-11 (+14d) | 2020-05-22 → 2020-06-05 (+14d) |  |  |
| 9 | Regulaciones. | 2020-04-20 → 2020-05-04 (+14d) | 2020-05-15 → 2020-05-29 (+14d) |  |  |
| 10 | **PLANIFICACION** | 2020-05-25 → 2020-06-08 (+14d) | 2020-07-10 → 2020-07-24 (+14d) |  |  |
| 11 | Estudio de Mercado. | 2020-05-25 → 2020-06-08 (+14d) | 2020-06-05 → 2020-06-19 (+14d) |  |  |
| 12 | Establecimiento de requerimientos. | 2020-06-08 → 2020-06-22 (+14d) | 2020-07-03 → 2020-07-17 (+14d) |  | resources Luis [50%]; Damian [50%]; Adrian [50%] → Adrian [50%]; Damian [50%]; Luis [25%] |
| 13 | Grupo de trabajo y tareas. | 2020-07-06 → 2020-07-20 (+14d) | 2020-07-10 → 2020-07-24 (+14d) |  |  |
| 14 | **INGENIERIA** | 2020-07-13 → 2020-07-27 (+14d) | 2021-02-12 → 2021-03-02 (+18d) |  |  |
| 15 | Diseño de Software. | 2020-07-13 → 2020-07-27 (+14d) | 2020-09-18 → 2020-10-02 (+14d) |  |  |
| 16 | Diseño de Hardware. | 2020-09-07 → 2020-09-21 (+14d) | 2020-10-30 → 2020-11-13 (+14d) |  | resources Luis [50%]; Damian [25%] → Damian [20%]; Luis [50%] |
| 17 | Esquemático. | 2020-11-02 → 2020-11-16 (+14d) | 2020-11-13 → 2020-11-27 (+14d) |  |  |
| 18 | Especificaciones técnicas. | 2020-11-16 → 2020-11-30 (+14d) | 2020-11-27 → 2020-12-11 (+14d) |  |  |
| 19 | Listado de Materiales. | 2020-11-30 → 2020-12-14 (+14d) | 2020-12-18 → 2020-12-25 (+7d) | 15d → 10d | resources Damian [50%]; Luis [50%] → Damian [25%]; Luis [25%] |
| 20 | Desarrollo de protocolo de pruebas. | 2020-11-30 → 2020-12-14 (+14d) | 2020-12-04 → 2020-12-18 (+14d) |  |  |
| 21 | Pruebas básicas en protoboard. | 2020-12-07 → 2020-12-21 (+14d) | 2020-12-25 → 2021-01-08 (+14d) |  |  |
| 22 | Diseño de PCB. | 2020-12-28 → 2021-01-11 (+14d) | 2021-01-08 → 2021-01-22 (+14d) |  |  |
| 23 | Diseño de Montaje. | 2021-01-11 → 2021-01-25 (+14d) | 2021-01-22 → 2021-02-05 (+14d) |  |  |
| 24 | Plano Topográfico Rev A. | 2021-01-25 → 2021-02-08 (+14d) | 2021-02-12 → 2021-03-02 (+18d) |  | resources Luis [50%]; Damian [25%] → Damian [25%]; Luis [25%] |
| 25 | **COMPRAS** | 2020-10-05 → 2020-10-19 (+14d) | 2021-04-28 → 2021-05-19 (+21d) | 144d → 149d |  |
| 26 | Circuito Impreso Prototipo. | 2021-01-11 → 2021-01-25 (+14d) | 2021-01-29 → 2021-02-12 (+14d) |  | resources Luis [50%] → Luis [25%] |
| 27 | Circuito Impreso Diseño Final. | 2021-03-31 → 2021-04-22 (+22d) | 2021-04-28 → 2021-05-19 (+21d) |  |  |
| 28 | Componentes Nacionales. | 2020-12-21 → 2020-12-28 (+7d) | 2021-01-08 → 2021-01-15 (+7d) |  |  |
| 29 | Componentes Importados. | 2020-10-05 → 2020-10-19 (+14d) | 2020-12-04 → 2020-12-18 (+14d) |  | resources Pablo [10%] → Pablo [10%]; Adrian [10%] |
| 30 | Gabinete. | 2021-01-25 → 2021-02-08 (+14d) | 2021-02-11 → 2021-03-01 (+18d) |  |  |
| 31 | Panel Solar. | 2021-01-25 → 2021-02-08 (+14d) | 2021-03-02 → 2021-03-16 (+14d) |  |  |
| 32 | Batería. | 2021-01-11 → 2021-01-25 (+14d) | 2021-03-16 → 2021-03-31 (+15d) |  |  |
| 33 | Antena. | 2020-11-02 → 2020-11-16 (+14d) | 2021-02-05 → 2021-02-23 (+18d) |  |  |
| 34 | Cables para antena. | 2020-11-23 → 2020-11-30 (+7d) | 2021-01-01 → 2021-01-08 (+7d) |  |  |
| 35 | **PROGRAMACION** | 2020-09-21 → 2020-10-05 (+14d) | 2021-02-26 → 2021-03-12 (+14d) |  |  |
| 36 | Adquisición de entradas. | 2020-09-21 → 2020-10-05 (+14d) | 2020-10-09 → 2020-10-23 (+14d) |  | resources Luis [50%] → Luis [25%] |
| 37 | Comunicación. | 2020-10-12 → 2020-10-26 (+14d) | 2020-10-23 → 2020-11-06 (+14d) |  |  |
| 38 | Configuración de GW. (Si se vende el GW tanto mejor) | 2020-10-26 → 2020-11-09 (+14d) | 2020-10-30 → 2020-11-13 (+14d) |  |  |
| 39 | Tratamiendo de los datos con NodeRed. | 2020-11-02 → 2020-11-16 (+14d) | 2020-12-09 → 2020-12-23 (+14d) |  |  |
| 40 | Historización en base de datos InfluxdB. | 2020-12-10 → 2020-12-24 (+14d) | 2021-01-06 → 2021-01-20 (+14d) |  |  |
| 41 | Visualización en Grafana. | 2021-01-07 → 2021-01-21 (+14d) | 2021-02-03 → 2021-02-19 (+16d) |  |  |
| 42 | Configuración de servidores locales. | 2021-02-04 → 2021-02-22 (+18d) | 2021-02-26 → 2021-03-12 (+14d) |  |  |
| 43 | **CONSTRUCCION** | 2021-02-01 → 2021-02-17 (+16d) | 2021-05-05 → 2021-06-01 (+27d) | 64d → 71d |  |
| 44 | Soldado de placa prototipo. | 2021-02-01 → 2021-02-17 (+16d) | 2021-02-05 → 2021-03-02 (+25d) | 5d → 10d | resources Luis [50%] → Luis [25%] |
| 45 | Soldado de placa diseño definitivo. | 2021-04-29 → 2021-05-20 (+21d) | 2021-05-05 → 2021-06-01 (+27d) | 5d → 7d | constraint none → start no earlier than 2021-05-20 |
| 46 | Construcción de Gabinete con Panel y Antena. | 2021-02-08 → 2021-03-03 (+23d) | 2021-02-12 → 2021-03-09 (+25d) |  |  |
| 47 | **ENSAYOS** | 2021-02-17 → 2021-03-10 (+21d) | 2021-02-23 → 2021-03-16 (+21d) |  |  |
| 48 | Eléctricos/Electrónicos. | 2021-02-17 → 2021-03-10 (+21d) | 2021-02-17 → 2021-03-10 (+21d) |  |  |
| 49 | Mecánicos. | 2021-02-18 → 2021-03-11 (+21d) | 2021-02-18 → 2021-03-11 (+21d) |  |  |
| 50 | Comunicación. | 2021-02-19 → 2021-03-12 (+21d) | 2021-02-23 → 2021-03-16 (+21d) |  |  |
| 51 | Software. | 2021-02-19 → 2021-03-12 (+21d) | 2021-02-23 → 2021-03-16 (+21d) |  |  |
| 52 | **PRUEBAS DE FUNCIONAMIENTO DE PROTOTIPO.** | 2021-02-19 → 2021-03-12 (+21d) | 2021-05-12 → 2021-06-04 (+23d) |  |  |
| 53 | Configuración de programa. | 2021-02-19 → 2021-03-12 (+21d) | 2021-02-22 → 2021-03-15 (+21d) |  | resources Luis [50%]; Damian [50%] → Damian [25%]; Luis [25%] |
| 54 | Mediciones. | 2021-02-23 → 2021-03-16 (+21d) | 2021-03-15 → 2021-04-07 (+23d) |  | resources Luis [50%] → Luis [25%] |
| 55 | Validación de prototipo. | 2021-03-16 → 2021-04-08 (+23d) | 2021-03-30 → 2021-04-21 (+22d) |  |  |
| 56 | Historicos de datos. | 2021-03-31 → 2021-04-22 (+22d) | 2021-04-14 → 2021-05-05 (+21d) |  |  |
| 57 | Visualización. | 2021-04-15 → 2021-05-06 (+21d) | 2021-05-12 → 2021-06-04 (+23d) |  |  |
| 58 | **TESTING FINAL** | 2021-05-06 → 2021-06-02 (+27d) | 2021-06-04 → 2021-06-30 (+26d) |  |  |
| 59 | Repetición de pruebas en definitivo | 2021-05-06 → 2021-06-02 (+27d) | 2021-05-19 → 2021-06-15 (+27d) |  |  |
| 60 | Validación del sistema final | 2021-05-20 → 2021-06-16 (+27d) | 2021-06-04 → 2021-06-30 (+26d) |  |  |
| 61 | **DOCUMENTACION** | 2021-06-07 → 2021-07-01 (+24d) | 2021-08-25 → 2021-10-01 (+37d) | 55d → 65d |  |
| 62 | Manual de Usuario | 2021-06-07 → 2021-07-01 (+24d) | 2021-07-05 → 2021-08-05 (+31d) | 20d → 25d | resources Luis [50%] → Luis [25%] |
| 63 | Guía rápida. | 2021-07-06 → 2021-08-06 (+31d) | 2021-08-03 → 2021-09-10 (+38d) | 20d → 25d | resources Luis [50%] → Luis [25%] |
| 64 | Plano Topográfico y de Conexionado Definitivos | 2021-08-04 → 2021-09-13 (+40d) | 2021-08-25 → 2021-10-01 (+37d) |  |  |
| 65 | FIN | 2021-08-25 → 2021-10-01 (+37d) | 2021-08-25 → 2021-10-01 (+37d) |  |  |
